# GANTT

Schedule from MS Project, 2021-08-30 to 2022-04-01, status date 2022-03-28, 7 hours a day, costs in $, A marks actual dates.

## Calendars

- Estándar: Mon 06:00-13:00; Tue-Wed 08:00-13:00; Thu-Fri 06:00-13:00; Sat-Sun off. Exceptions (off unless hours are given): 2021-10-18 (festivo), 2021-11-01 (festivo), 2021-11-15 (festivo), 2021-12-08 (festivo), 2022-01-10 (festivo), 2022-03-21 (festivo).

## Resources

| Resource | Rate |
| --- | --- |
| Carlos Cristancho | 7000 |
| Cristian Silva | 7000 |
| Miller Narvaez | 7000 |
| Jeison Estupiñan | 7000 |
| Nicolas Perez | 7000 |
| Sergio Bautista | 7000 |

## Schedule

| ID | WBS | Task | Duration | Start | Finish | Predecessors | Complete | Remaining | Total slack | Constraint | Resources | Work | Actual work | Cost | Actual cost |
| --- | --- | --- | --- | --- | --- | --- | --- | --- | --- | --- | --- | --- | --- | --- | --- |
| 1 | 1 | **Proyecto** | 131.29d | 2021-08-30 A | 2022-04-01 |  | 94% | 7.72d | 0d |  |  | 3449h | 3232h | 24,143,000 | 22,624,000 |
| 2 | 1.1 | **1. Planeación del Proyecto** | 13d | 2021-08-30 A | 2021-09-17 A |  | 100% |  |  |  | Sergio Bautista | 320h | 320h | 2,240,000 | 2,240,000 |
| 3 | 1.1.1 | 1.1 Recolección de datos | 17.14d | 2021-08-30 A | 2021-09-17 A |  | 100% |  |  |  | Jeison Estupiñan | 120h | 120h | 840,000 | 840,000 |
| 4 | 1.1.2 | 1.2 Mapas de procesos del programa | 11.43d | 2021-09-02 A | 2021-09-15 A |  | 100% |  |  | start no earlier than 2021-09-02 | Nicolas Perez | 80h | 80h | 560,000 | 560,000 |
| 5 | 1.2 | **2. Estandarización de Software** | 30.71d | 2021-09-06 A | 2021-10-25 A |  | 100% |  |  |  |  | 280h | 280h | 1,960,000 | 1,960,000 |
| 6 | 1.2.1 | 2.1.Diagrama de distribución | 8d | 2021-09-06 A | 2021-09-14 A |  | 100% |  |  | start no earlier than 2021-09-06 | Carlos Cristancho | 56h | 56h | 392,000 | 392,000 |
| 7 | 1.2.2 | 2.2. Diagramas de casos de uso | 8d | 2021-09-15 A | 2021-09-23 A | 6 | 100% |  |  | start no earlier than 2021-09-15 | Jeison Estupiñan | 56h | 56h | 392,000 | 392,000 |
| 8 | 1.2.3 | 2.3. Diagrama de clases | 8d | 2021-09-24 A | 2021-10-04 A | 7 | 100% |  |  | start no earlier than 2021-09-23 | Miller Narvaez | 56h | 56h | 392,000 | 392,000 |
| 9 | 1.2.4 | 2.4. Diagrama entidad relacion | 8d | 2021-10-05 A | 2021-10-13 A | 8 | 100% |  |  | start no earlier than 2021-10-01 | Sergio Bautista | 56h | 56h | 392,000 | 392,000 |
| 10 | 1.2.5 | 2.5. Requerimientos F y NF | 8d | 2021-10-14 A | 2021-10-25 A | 9 | 100% |  |  |  | Cristian Silva | 56h | 56h | 392,000 | 392,000 |
| 11 | 1.3 | **3. Desarrollo de prototipo** | 46d | 2022-01-19 A | 2022-04-01 | 5 | 92% | 3.5d |  |  |  | 2849h | 2632h | 19,943,000 | 18,424,000 |
| 12 | 1.3.1 | 3.1. Creación base de datos | 58.14d | 2022-01-19 A | 2022-04-01 |  | 92% | 4.43d | 0d | finish no earlier than 2022-04-01 | Sergio Bautista | 407h | 376h | 2,849,000 | 2,632,000 |
| 13 | 1.3.2 | 3.2. Prototipo no funcional | 58.14d | 2022-01-19 A | 2022-04-01 |  | 92% | 4.43d | 0d | finish no earlier than 2022-04-01 | Carlos Cristancho; Nicolas Perez | 814h | 752h | 5,698,000 | 5,264,000 |
| 14 | 1.3.3 | 3.3. Desarrollo de interfaz por usuario | 58.14d | 2022-01-19 A | 2022-04-01 |  | 92% | 4.43d | 0d | finish no earlier than 2022-04-01 | Carlos Cristancho; Sergio Bautista | 814h | 752h | 5,698,000 | 5,264,000 |
| 15 | 1.3.4 | 3.4. Desarrollo funcional | 58.14d | 2022-01-19 A | 2022-04-01 |  | 92% | 4.43d | 0d | finish no earlier than 2022-04-01 | Jeison Estupiñan; Miller Narvaez | 814h | 752h | 5,698,000 | 5,264,000 |
| 16 | 2 | **4. Manual y uso** | 0.71d? | 2021-08-30 A | 2021-08-30 A |  | 100% |  |  |  |  |  |  |  |  |
| 17 | 2.1 | 4.1. Creación del manual técnico | 1.14d? | 2021-08-30 A | 2021-08-30 A |  | 100% |  |  |  |  |  |  |  |  |
| 18 | 2.2 | 4.2.Manual del Usuario y de Operación | 1.14d? | 2021-08-30 A | 2021-08-30 A |  | 100% |  |  |  |  |  |  |  |  |
| 19 | 2.3 | 4.3. Creación del manual de instalación | 1.14d? | 2021-08-30 A | 2021-08-30 A |  | 100% |  |  |  |  |  |  |  |  |
| 20 | 3 | **5. Comercio** | 0.71d? | 2021-08-30 A | 2021-08-30 A |  | 100% |  |  |  |  |  |  |  |  |
| 21 | 3.1 | 5.1. Cotización de costos | 1.14d? | 2021-08-30 A | 2021-08-30 A |  | 100% |  |  |  |  |  |  |  |  |
